# 项目进度计划

Schedule from MS Project, 2024-04-08 to 2024-06-07, A marks actual dates.

## Calendars

- 标准: Mon-Fri 08:00-12:00, 13:00-17:00; Sat-Sun off.

## Resources

| Resource |
| --- |
| <新资源> |
| 应用服务器 |
| 备份服务器 |
| 测试服务器 |
| 主数据库 |
| 备份数据库 |
| 李一柯 |
| 冯韵涵 |
| 邱子晴 |
| 彭炳桥 |
| 郑俊烽 |
| 王正东 |
| 金弋杰 |
| 乔凯星 |
| 周扬 |
| 宋瑜航 |
| 廖文远 |

## Schedule

| ID | WBS | Task | Type | Duration | Start | Finish | Predecessors | Complete | Remaining | Baseline start | Baseline finish | Baseline duration | Total slack | Free slack | Constraint | Resources | Work | Actual work | 参与人员 |
| --- | --- | --- | --- | --- | --- | --- | --- | --- | --- | --- | --- | --- | --- | --- | --- | --- | --- | --- | --- |
| 2 | 1 | **开发环境准备** |  | 10d? | 2024-04-08 A | 2024-04-19 |  | 27% | 7.3d? | 2024-04-08 | 2024-04-19 | 10d? |  |  |  |  | 346h | 118h |  |
| 3 | 1.1 | 服务器初始化 |  | 2d | 2024-04-08 A | 2024-04-09 A |  | 100% |  | 2024-04-08 | 2024-04-09 | 2d |  |  | finish no earlier than 2024-04-09 | 应用服务器; 备份服务器; 测试服务器; 李一柯; 冯韵涵 | 80h | 80h | 李一柯，冯蕴涵 |
| 4 | 1.2 | 数据库初始化 |  | 1d | 2024-04-09 A | 2024-04-09 A |  | 100% |  | 2024-04-08 | 2024-04-09 | 2d |  |  | finish no earlier than 2024-04-09 | 主数据库; 备份数据库; 邱子晴; 彭炳桥 | 32h | 32h |  |
| 5 | 1.3 | **系统管理** |  | 5d? | 2024-04-10 A | 2024-04-16 | 3, 4, 24 | 8% | 4.58d? | 2024-04-10 | 2024-04-16 | 5d? | -0.1d | 0d |  |  | 202h | 6h |  |
| 6 | 1.3.1 | **历史记录管理** |  | 3.1d? | 2024-04-11 A | 2024-04-16 |  | 25% | 2.33d? | 2024-04-11 | 2024-04-16 | 3.1d? | -2.1d | 0d |  |  | 24h | 6h |  |
| 7 | 1.3.1.1 | 备份系统 |  | 1d? | 2024-04-11 A | 2024-04-12 | 9, 10, 11, 12, 13, 14, 15, 16, 17, 18, 19, 20 | 75% | 0.25d? | 2024-04-11 | 2024-04-12 | 1d? | -4.9d | 0d |  | 李一柯 | 8h | 6h |  |
| 8 | 1.3.1.2 | 日志记录 |  | 2d | 2024-04-15 | 2024-04-16 | 3, 4, 7 |  |  | 2024-04-15 | 2024-04-16 | 2d | -5d | 0d |  | 李一柯 | 16h |  |  |
| 9 | 1.3.2 | **应用运行情况管理** |  | 1d | 2024-04-10 | 2024-04-11 |  |  |  | 2024-04-10 | 2024-04-11 | 1d | 0d |  |  |  | 24h |  |  |
| 10 | 1.3.2.1 | 运行情况监测 | manual | 0.5d | 2024-04-10 | 2024-04-11 | 3, 12, 13, 14, 15, 16, 17, 18, 19, 20 |  |  | 2024-04-10 | 2024-04-11 | 0.5d |  |  |  | 郑俊烽; 冯韵涵; 李一柯 | 12h |  |  |
| 11 | 1.3.2.2 | 参数监测 | manual | 0.5d | 2024-04-11 | 2024-04-11 | 10 |  |  | 2024-04-11 | 2024-04-11 | 0.5d |  |  |  | 郑俊烽; 冯韵涵; 李一柯 | 12h |  |  |
| 12 | 1.3.3 | **硬件运行情况管理** |  | 0.9d | 2024-04-10 | 2024-04-10 | 3, 4 |  |  | 2024-04-10 | 2024-04-10 | 0.9d | 0d |  |  |  | 36h |  |  |
| 13 | 1.3.3.1 | CPU运行检测 | manual | 0.3d | 2024-04-10 | 2024-04-10 | 3, 4 |  |  | 2024-04-10 | 2024-04-10 | 0.3d |  |  |  | 备份服务器; 备份数据库; 应用服务器; 主数据库; 彭炳桥 | 12h |  |  |
| 14 | 1.3.3.2 | 内存运行检测 | manual | 0.3d | 2024-04-10 | 2024-04-10 | 13 |  |  | 2024-04-10 | 2024-04-10 | 0.3d |  |  |  | 备份服务器; 备份数据库; 应用服务器; 主数据库; 彭炳桥 | 12h |  |  |
| 15 | 1.3.3.3 | 其他硬件监测 | manual | 0.3d | 2024-04-10 | 2024-04-10 | 14 |  |  | 2024-04-10 | 2024-04-10 | 0.3d |  |  |  | 备份服务器; 备份数据库; 应用服务器; 主数据库; 彭炳桥 | 12h |  |  |
| 16 | 1.3.4 | **网络运行情况管理** |  | 0.5d | 2024-04-10 | 2024-04-10 |  |  |  | 2024-04-10 | 2024-04-10 | 0.5d | 0d |  |  |  | 14h |  |  |
| 17 | 1.3.4.1 | 前端网站连接维稳 | manual | 0.25d | 2024-04-10 | 2024-04-10 | 3, 24, 25, 26 |  |  | 2024-04-10 | 2024-04-10 | 0.25d |  |  |  | 李一柯; 宋瑜航 | 4h |  |  |
| 18 | 1.3.4.2 | 备份服务器连接维稳 | manual | 0.25d | 2024-04-10 | 2024-04-10 | 3, 17 |  |  | 2024-04-10 | 2024-04-10 | 0.25d |  |  |  | 李一柯; 宋瑜航 | 4h |  |  |
| 19 | 1.3.4.3 | 测试服务器连接维稳 | manual | 0.25d | 2024-04-10 | 2024-04-10 | 3 |  |  | 2024-04-10 | 2024-04-10 | 0.25d |  |  |  | 冯韵涵 | 2h |  |  |
| 20 | 1.3.4.4 | 后端数据库连接维稳 | manual | 0.25d | 2024-04-10 | 2024-04-10 | 4, 17 |  |  | 2024-04-10 | 2024-04-10 | 0.25d |  |  |  | 邱子晴; 王正东 | 4h |  |  |
| 21 | 1.3.5 | **告警系统** |  | 3d | 2024-04-11 | 2024-04-16 |  |  |  | 2024-04-11 | 2024-04-16 | 3d | 0d |  |  |  | 104h |  |  |
| 22 | 1.3.5.1 | 警报启动 | manual | 1d | 2024-04-11 | 2024-04-12 | 3, 4, 9, 12, 13, 14, 15, 16, 17, 18, 19, 20 |  |  | 2024-04-11 | 2024-04-12 | 1d |  |  |  | 冯韵涵; 王正东; 邱子晴; 彭炳桥; 宋瑜航 | 40h |  |  |
| 23 | 1.3.5.2 | 警报解除 | manual | 2d | 2024-04-12 | 2024-04-16 | 22 |  |  | 2024-04-12 | 2024-04-16 | 2d |  |  |  | 彭炳桥; 邱子晴; 王正东; 宋瑜航 | 64h |  |  |
| 24 | 1.4 | **前端视图准备** |  | 2d? | 2024-04-08 | 2024-04-09 |  |  |  | 2024-04-08 | 2024-04-09 | 2d? | -2d | 0d |  |  | 32h |  |  |
| 25 | 1.4.1 | 用户视图 |  | 1d? | 2024-04-08 | 2024-04-08 |  |  |  | 2024-04-08 | 2024-04-08 | 1d? | -2d | 0d |  | 郑俊烽; 宋瑜航 | 16h |  |  |
| 26 | 1.4.2 | 权限接口 |  | 1d? | 2024-04-09 | 2024-04-09 | 25 |  |  | 2024-04-09 | 2024-04-09 | 1d? | -2d | 0d |  | 郑俊烽; 宋瑜航 | 16h |  |  |

| ID | WBS | Task | Type | Duration | Start | Finish | Predecessors | Baseline start | Baseline finish | Baseline duration | Total slack | Free slack | Resources | Work |
| --- | --- | --- | --- | --- | --- | --- | --- | --- | --- | --- | --- | --- | --- | --- |
| 27 | 2 | **账号登录注册模块** |  | 14d? | 2024-04-10 | 2024-04-29 | 2, 5 | 2024-04-10 | 2024-04-29 | 14d? | 0d |  |  | 91.2h |
| 28 | 2.1 | **权限管理** |  | 5.9d | 2024-04-10 | 2024-04-17 |  | 2024-04-10 | 2024-04-17 | 5.9d | 0d |  |  | 43.2h |
| 29 | 2.1.1 | 用户管理 | manual | 2.4d | 2024-04-12 | 2024-04-17 | 4, 30 | 2024-04-12 | 2024-04-17 | 2.4d |  |  | 邱子晴; 冯韵涵; 王正东; 备份数据库 | 32h |
| 30 | 2.1.2 | 角色管理 | manual | 1.4d | 2024-04-10 | 2024-04-12 | 4 | 2024-04-10 | 2024-04-12 | 2d |  |  | 李一柯; 彭炳桥 | 11.2h |
| 31 | 2.2 | **账号管理** |  | 6d? | 2024-04-22 | 2024-04-29 |  | 2024-04-22 | 2024-04-29 | 6d? | 19d | 0d |  | 48h |
| 32 | 2.2.1 | 用户登录 |  | 1d | 2024-04-22 | 2024-04-22 | 2 | 2024-04-22 | 2024-04-22 | 1d | 19d | 0d | 李一柯; 宋瑜航 | 16h |
| 33 | 2.2.2 | 用户注册 |  | 1d | 2024-04-23 | 2024-04-23 | 32 | 2024-04-23 | 2024-04-23 | 1d | 19d | 0d | 李一柯; 宋瑜航 | 16h |
| 34 | 2.2.3 | 账号验证 |  | 1d? | 2024-04-29 | 2024-04-29 | 32, 33, 58, 59 | 2024-04-29 | 2024-04-29 | 1d? | 19d | 0d | 李一柯; 宋瑜航 | 16h |
| 35 | 3 | **数据上报** |  | 5d? | 2024-04-24 | 2024-04-30 |  | 2024-04-24 | 2024-04-30 | 5d? | 1d | 0d |  | 72h |
| 36 | 3.1 | 企业备案 |  | 1d? | 2024-04-24 | 2024-04-24 | 2 | 2024-04-24 | 2024-04-24 | 1d? | 1d | 0d | 李一柯; 宋瑜航 | 16h |
| 37 | 3.2 | 报表审核 |  | 2d? | 2024-04-25 | 2024-04-26 | 36 | 2024-04-25 | 2024-04-26 | 2d? | 1d | 0d | 王正东; 彭炳桥 | 24h |
| 38 | 3.3 | 报表选择 |  | 1d? | 2024-04-29 | 2024-04-29 | 36, 37 | 2024-04-29 | 2024-04-29 | 1d? | 1d | 0d | 冯韵涵; 邱子晴 | 16h |
| 39 | 3.4 | 数据上报 |  | 1d? | 2024-04-30 | 2024-04-30 | 38 | 2024-04-30 | 2024-04-30 | 1d? | 1d |  | 王正东; 宋瑜航 | 16h |
| 40 | 4 | **数据管理** |  | 2d? | 2024-05-01 | 2024-05-02 |  | 2024-05-01 | 2024-05-02 | 2d? | 1d | 0d |  | 32h |
| 41 | 4.1 | 报表管理 |  | 1d? | 2024-05-01 | 2024-05-01 | 35 | 2024-05-01 | 2024-05-01 | 1d? | 1d | 0d | 李一柯 | 8h |
| 42 | 4.2 | 数据修改 |  | 1d? | 2024-05-02 | 2024-05-02 | 41 | 2024-05-02 | 2024-05-02 | 1d? | 1d |  | 彭炳桥 | 8h |
| 43 | 4.3 | 数据删除 |  | 1d? | 2024-05-02 | 2024-05-02 | 41 | 2024-05-02 | 2024-05-02 | 1d? | 1d |  | 王正东 | 8h |
| 44 | 4.4 | 数据还原 |  | 1d? | 2024-05-02 | 2024-05-02 | 41 | 2024-05-02 | 2024-05-02 | 1d? | 1d |  | 宋瑜航 | 8h |
| 45 | 5 | **数据可视化** |  | 10d? | 2024-05-06 | 2024-05-17 |  | 2024-05-06 | 2024-05-17 | 10d? | 1d | 0d |  | 280h |
| 46 | 5.1 | 数据查询 |  | 1d? | 2024-05-06 | 2024-05-06 | 35, 40, 61, 62 | 2024-05-06 | 2024-05-06 | 1d? | 1d | 0d | 李一柯; 彭炳桥 | 16h |
| 47 | 5.2 | 多维分析 |  | 8d | 2024-05-07 | 2024-05-16 | 46 | 2024-05-07 | 2024-05-16 | 8d | 1d | 0d | 冯韵涵; 李一柯; 邱子晴; 宋瑜航 | 256h |
| 48 | 5.3 | 数据导出 |  | 1d | 2024-05-17 | 2024-05-17 | 47 | 2024-05-17 | 2024-05-17 | 1d | 1d |  | 李一柯 | 8h |
| 49 | 6 | **通知模块** |  | 4d | 2024-05-20 | 2024-05-23 |  | 2024-05-20 | 2024-05-23 | 4d | 1d | 0d |  | 32h |
| 50 | 6.1 | 时限验证 |  | 1d | 2024-05-20 | 2024-05-20 | 45 | 2024-05-20 | 2024-05-20 | 1d | 1d | 0d | 李一柯 | 8h |
| 51 | 6.2 | 通知发布 |  | 1d | 2024-05-21 | 2024-05-21 | 50 | 2024-05-21 | 2024-05-21 | 1d | 1d | 0d | 彭炳桥 | 8h |
| 52 | 6.3 | 通知发布 |  | 1d | 2024-05-22 | 2024-05-22 | 51 | 2024-05-22 | 2024-05-22 | 1d | 1d | 0d | 邱子晴 | 8h |
| 53 | 6.4 | 查看通知 |  | 1d | 2024-05-23 | 2024-05-23 | 52 | 2024-05-23 | 2024-05-23 | 1d | 1d |  | 宋瑜航 | 8h |

| ID | WBS | Task | Type | Duration | Start | Finish | Predecessors | Baseline start | Baseline finish | Baseline duration | Total slack | Free slack | Constraint | Resources | Work |
| --- | --- | --- | --- | --- | --- | --- | --- | --- | --- | --- | --- | --- | --- | --- | --- |
| 54 | 7 | **单元测试流** |  | 31.1d | 2024-04-11 | 2024-05-24 |  | 2024-04-11 | 2024-05-24 | 31.1d | 1d |  |  |  | 304h |
| 55 | 7.1 | 服务器稳定性测试 |  | 2d | 2024-04-11 | 2024-04-15 | 3, 9, 12, 13, 14, 15, 16, 17, 18, 19, 20 | 2024-04-11 | 2024-04-15 | 2d | 30.1d | 4.1d |  | 金弋杰; 乔凯星; 周扬; 测试服务器; 应用服务器 | 80h |
| 56 | 7.2 | 历史记录测试 |  | 2d | 2024-04-17 | 2024-04-18 | 3, 4, 6, 7, 8, 9, 10, 11, 12, 13, 14, 15, 16, 17, 18, 19, 20, 21, 22, 23 | 2024-04-17 | 2024-04-18 | 2d | 27d | 1d |  | 金弋杰; 备份数据库 | 32h |
| 57 | 7.3 | 数据库权限测试 |  | 1d | 2024-04-17 | 2024-04-18 | 4, 28 | 2024-04-17 | 2024-04-18 | 1d | 27.1d |  |  | 乔凯星; 周扬; 主数据库; 测试服务器 | 32h |
| 58 | 7.4 | 数据库新增企业用户测试 |  | 1d | 2024-04-24 | 2024-04-24 | 33 | 2024-04-24 | 2024-04-24 | 1d | 21d | 2d |  | 金弋杰; 乔凯星; 周扬; 测试服务器; 主数据库 | 40h |
| 59 | 7.5 | 用户登录测试 |  | 1d | 2024-04-26 | 2024-04-26 | 32, 33 | 2024-04-26 | 2024-04-26 | 1d | 19d | 0d |  | 金弋杰; 乔凯星; 周扬; 测试服务器; 主数据库 | 40h |
| 60 | 7.6 | 用户视图测试 |  | 1d | 2024-05-02 | 2024-05-02 | 24, 25, 26, 27, 28, 29, 30, 31, 32, 33, 34 | 2024-05-02 | 2024-05-02 | 1d | 17d |  |  | 金弋杰; 乔凯星; 周扬 | 24h |
| 61 | 7.7 | 数据上传测试 |  | 1d | 2024-05-01 | 2024-05-01 | 35 | 2024-05-01 | 2024-05-01 | 1d | 2d | 1d |  | 金弋杰; 乔凯星 | 16h |
| 62 | 7.8 | 数据修改测试 |  | 1d | 2024-05-03 | 2024-05-03 | 35, 40, 61 | 2024-05-03 | 2024-05-03 | 1d | 1d | 0d |  | 金弋杰; 乔凯星; 周扬 | 24h |
| 63 | 7.9 | 数据可视化测试 |  | 1d | 2024-05-20 | 2024-05-20 | 45 | 2024-05-20 | 2024-05-20 | 1d | 5d |  |  | 周扬 | 8h |
| 64 | 7.10 | 通知模块测试 |  | 1d | 2024-05-24 | 2024-05-24 | 49 | 2024-05-24 | 2024-05-24 | 1d | 1d | 0d |  | 金弋杰 | 8h |
| 65 | 8 | **集成测试流** |  | 26d | 2024-04-22 | 2024-05-27 |  | 2024-04-22 | 2024-05-22 | 23d | 9d |  |  |  | 136h |
| 66 | 8.1 | 测试系统监测体系 |  | 2d | 2024-04-22 | 2024-04-23 | 2, 55, 56 | 2024-04-22 | 2024-04-23 | 2d | 33d |  |  | 金弋杰; 乔凯星; 周扬 | 48h |
| 67 | 8.2 | 注册登录体系 |  | 1d | 2024-04-30 | 2024-04-30 | 27, 28, 29, 30, 31, 32, 33, 34 | 2024-04-30 | 2024-04-30 | 1d | 28d |  |  | 金弋杰; 乔凯星; 周扬 | 24h |
| 68 | 8.3 | 数据管理体系 |  | 3d | 2024-05-20 | 2024-05-22 | 35, 40, 45 | 2024-05-20 | 2024-05-22 | 3d | 12d |  |  | 金弋杰; 乔凯星 | 48h |
| 69 | 8.4 | 数据可视化体系 | manual | 1d | 2024-05-24 | 2024-05-24 | 45 | 2024-04-22 | 2024-04-22 | 1d? |  |  |  | 周扬 | 8h |
| 70 | 8.5 | 通知体系 | manual | 1d | 2024-05-27 | 2024-05-27 | 64 |  |  |  |  |  |  | 金弋杰 | 8h |
| 71 | 9 | 系统测试 |  | 7d | 2024-05-28 | 2024-06-05 | 40, 45, 49, 54 | 2024-05-27 | 2024-06-05 | 8d | 0d |  | start no earlier than 2024-05-28 | 金弋杰; 乔凯星; 周扬 | 168h |
| 73 | 10 | 实施 | manual | 2d | 2024-06-06 | 2024-06-07 | 71 | 2024-06-06 | 2024-06-07 | 2d |  |  |  | 廖文远 | 16h |
